How a schedule from MS Project changed from version to version. A marks actual dates.

## Version 1 (data date 2018-05-10, saved 2018-04-28, file L051.mpp)

Note of the change: Solution of issue #6

| ID | WBS | Task | Duration | Start | Finish | Predecessors | Complete | Total float | Constraint |
| --- | --- | --- | --- | --- | --- | --- | --- | --- | --- |
| 1 |  | start | 0d | 2018-03-01 09:00 A | 2018-03-01 09:00 A |  | 100% |  |  |
| 2 | 2 | **Interface creation** | 92.98d | 2018-03-01 09:00 A | 2018-07-20 08:49 | 1 | 73% | 0d |  |
| 3 | 2.1 | **Interface design** | 25.62d | 2018-03-01 09:00 A | 2018-04-09 15:00 A |  | 100% |  |  |
| 4 |  | Design 2D elements | 3w | 2018-03-01 09:00 A | 2018-03-26 12:00 A |  | 100% |  |  |
| 5 |  | Design 3D elements | 2w | 2018-03-01 09:00 A | 2018-03-19 11:00 A | 4SS | 100% |  |  |
| 6 |  | Creating screensaver | 3w | 2018-03-19 11:00 A | 2018-04-09 15:00 A | 5 | 100% |  |  |
| 7 |  | Interface programming | 3w | 2018-06-29 08:49 | 2018-07-20 08:49 | 3, 12 |  | 0d |  |
| 8 | 3 | **Building base objects** | 84.23d | 2018-03-26 13:00 A | 2018-07-30 14:49 |  | 24% | 22.5d |  |
| 9 |  | Analys and building structure for base objects | 2w | 2018-03-26 13:00 A | 2018-04-09 15:00 A |  | 100% |  |  |
| 10 |  | Programming facilities for base objects | 3w | 2018-04-10 15:49 A | 2018-05-04 15:49 | 9 | 40% | 24.77d |  |
| 11 |  | Complete base objects | 12w | 2018-04-20 09:00 A | 2018-07-30 14:49 | 10 | 7% | 22.5d |  |
| 12 | 4 | **GIS-kernel creation** | 77.98d | 2018-03-01 09:00 A | 2018-06-29 08:49 |  | 59% | 0d |  |
| 13 |  | Analys and design kernel | 3w | 2018-03-01 09:00 A | 2018-03-26 12:00 A |  | 100% |  |  |
| 14 |  | Building kernel model | 2.9w | 2018-03-26 13:00 A | 2018-04-15 18:00 A | 13 | 100% |  |  |
| 15 |  | Testing kernel model | 0.25w | 2018-04-09 13:49 A | 2018-04-10 15:49 A | 14 | 100% |  |  |
| 16 |  | Creating workers for kernel | 10.25w | 2018-04-10 15:49 A | 2018-06-29 08:49 | 15 | 34% | 0d |  |
| 17 |  | Complete multimedia | 6w | 2018-04-09 15:00 A | 2018-05-28 11:00 | 3 | 60% | 65.85d |  |
| 18 |  | Creating Help system | 2w | 2018-07-31 11:49 | 2018-08-14 14:49 | 7 |  | 11.5d |  |
| 19 | 7 | **Creating User's guide** | 17.38d | 2018-07-06 08:49 | 2018-07-31 11:49 | 7FS-10d |  | 0d |  |
| 20 |  | Develop design management | 1w | 2018-07-06 08:49 | 2018-07-13 09:49 |  |  | 0d |  |
| 21 |  | Writing User's Guide | 3w | 2018-07-10 08:49 | 2018-07-31 11:49 | 20SS+2d |  | 0d |  |
| 22 | 8 | **Website creation and support** | 23.62d | 2018-07-10 08:49 | 2018-08-10 14:49 |  |  | 0d |  |
| 23 |  | Developing site's structure | 1d | 2018-07-10 08:49 | 2018-07-11 08:49 | 21SS |  | 0d |  |
| 24 |  | Design site | 1.4w | 2018-07-11 08:49 | 2018-07-20 10:49 | 23 |  | 0d |  |
| 25 |  | Complete site | 3w | 2018-07-20 10:49 | 2018-08-10 14:49 | 24 |  | 0d |  |
| 26 |  | Testing site | 4.1w | 2018-08-01 14:49 | 2018-08-30 09:49 | 22FS-7d |  | 0d |  |
| 27 |  | Site commission - finish | 0d | 2018-08-30 09:49 | 2018-08-30 09:49 | 26 |  | 0d |  |
| 28 | 11 | **Project meetings** | 117.12d | 2018-03-07 09:00 A | 2018-08-29 10:00 |  | 33% | 0.98d |  |
| 29 |  | Project meetings 1 | 1h | 2018-03-07 09:00 A | 2018-03-07 10:00 A |  | 100% |  | start no earlier than 2018-03-07 09:00 |
| 30 |  | Project meetings 2 | 1h | 2018-03-14 09:00 A | 2018-03-14 10:00 A |  | 100% |  | start no earlier than 2018-03-14 09:00 |
| 31 |  | Project meetings 3 | 1h | 2018-03-21 09:00 A | 2018-03-21 10:00 A |  | 100% |  | start no earlier than 2018-03-21 09:00 |
| 32 |  | Project meetings 4 | 1h | 2018-03-28 09:00 A | 2018-03-28 10:00 A |  | 100% |  | start no earlier than 2018-03-28 09:00 |
| 33 |  | Project meetings 5 | 1h | 2018-04-04 09:00 A | 2018-04-04 10:00 A |  | 100% |  | start no earlier than 2018-04-04 09:00 |
| 34 |  | Project meetings 6 | 1h | 2018-04-11 09:00 A | 2018-04-11 10:00 A |  | 100% |  | start no earlier than 2018-04-11 09:00 |
| 35 |  | Project meetings 7 | 1h | 2018-04-18 09:00 A | 2018-04-18 10:00 A |  | 100% |  | start no earlier than 2018-04-18 09:00 |
| 36 |  | Project meetings 8 | 1h | 2018-04-25 09:00 A | 2018-04-25 10:00 A |  | 100% |  | start no earlier than 2018-04-25 09:00 |
| 37 |  | Project meetings 9 | 1h | 2018-05-16 09:00 | 2018-05-16 10:00 |  |  | 73.98d | start no earlier than 2018-05-16 09:00 |
| 38 |  | Project meetings 10 | 1h | 2018-05-23 09:00 | 2018-05-23 10:00 |  |  | 68.98d | start no earlier than 2018-05-23 09:00 |
| 39 |  | Project meetings 11 | 1h | 2018-05-30 09:00 | 2018-05-30 10:00 |  |  | 63.98d | start no earlier than 2018-05-30 09:00 |
| 40 |  | Project meetings 12 | 1h | 2018-06-06 09:00 | 2018-06-06 10:00 |  |  | 58.98d | start no earlier than 2018-06-06 09:00 |
| 41 |  | Project meetings 13 | 1h | 2018-06-13 09:00 | 2018-06-13 10:00 |  |  | 55.98d | start no earlier than 2018-06-13 09:00 |
| 42 |  | Project meetings 14 | 1h | 2018-06-20 09:00 | 2018-06-20 10:00 |  |  | 50.98d | start no earlier than 2018-06-20 09:00 |
| 43 |  | Project meetings 15 | 1h | 2018-06-27 09:00 | 2018-06-27 10:00 |  |  | 45.98d | start no earlier than 2018-06-27 09:00 |
| 44 |  | Project meetings 16 | 1h | 2018-07-04 09:00 | 2018-07-04 10:00 |  |  | 40.98d | start no earlier than 2018-07-04 09:00 |
| 45 |  | Project meetings 17 | 1h | 2018-07-11 09:00 | 2018-07-11 10:00 |  |  | 35.98d | start no earlier than 2018-07-11 09:00 |
| 46 |  | Project meetings 18 | 1h | 2018-07-18 09:00 | 2018-07-18 10:00 |  |  | 30.98d | start no earlier than 2018-07-18 09:00 |
| 47 |  | Project meetings 19 | 1h | 2018-07-25 09:00 | 2018-07-25 10:00 |  |  | 25.98d | start no earlier than 2018-07-25 09:00 |
| 48 |  | Project meetings 20 | 1h | 2018-08-01 09:00 | 2018-08-01 10:00 |  |  | 20.98d | start no earlier than 2018-08-01 09:00 |
| 49 |  | Project meetings 21 | 1h | 2018-08-08 09:00 | 2018-08-08 10:00 |  |  | 15.98d | start no earlier than 2018-08-08 09:00 |
| 50 |  | Project meetings 22 | 1h | 2018-08-15 09:00 | 2018-08-15 10:00 |  |  | 10.98d | start no earlier than 2018-08-15 09:00 |
| 51 |  | Project meetings 23 | 1h | 2018-08-22 09:00 | 2018-08-22 10:00 |  |  | 5.98d | start no earlier than 2018-08-22 09:00 |
| 52 |  | Project meetings 24 | 1h | 2018-08-29 09:00 | 2018-08-29 10:00 |  |  | 0.98d | start no earlier than 2018-08-29 09:00 |

## Version 2 (data date 2018-05-10, saved 2018-05-02, file L052.mpp)

Note of the change: Merge pull request #8 from Oreder/develop

Last finish 2018-08-30 → 2018-08-24 (-6d).

Added:

| ID | Task | Duration | Start | Finish |
| --- | --- | --- | --- | --- |
| 2 | **Analys** | 15.38d | 2018-03-01 09:00 A | 2018-03-26 12:00 A |
| 5 | **Design** | 89.1d | 2018-03-01 09:00 A | 2018-07-16 09:49 |
| 15 | **Programming** | 72.88d | 2018-04-10 15:49 A | 2018-07-30 14:49 |
| 24 | **Testing** | 92.5d | 2018-04-09 13:49 A | 2018-08-24 08:49 |
| 27 | **Documentation** | 82.98d | 2018-04-09 15:00 A | 2018-08-10 14:49 |

Removed: 52 Project meetings 24

Changed:

| ID | Task | Start | Finish | Duration | Complete | Total float |
| --- | --- | --- | --- | --- | --- | --- |
| 3 | Analys and building structure for base objects | 2018-03-26 13:00 A → 2018-03-01 09:00 A (-25d) | 2018-04-09 15:00 A → 2018-03-26 12:00 A (-14d) | 2w → 3.02w |  |  |
| 10 | Develop design management | 2018-07-06 08:49 → 2018-03-26 13:00 (-102d) | 2018-07-13 09:49 → 2018-04-02 14:00 (-102d) |  |  | 0d → 65.6d |
| 11 | Design site | 2018-07-11 08:49 → 2018-07-09 08:49 (-2d) | 2018-07-20 10:49 → 2018-07-16 09:49 (-4d) | 1.4w → 1w |  |  |
| 12 | **GIS-kernel creation** | 2018-03-01 09:00 A → 2018-03-26 13:00 A (+25d) |  | 77.98d → 62.6d | 59% → 48% |  |
| 16 | **Interface creation** | 2018-03-01 09:00 A → 2018-06-29 08:49 (+120d) |  | 92.98d → 15d | 73% → 0% |  |
| 18 | **Building base objects** | 2018-03-26 13:00 A → 2018-04-10 15:49 A (+15d) |  | 84.23d → 72.88d | 24% → 14% | 22.5d → 18.38d |
| 21 | **Website creation and support** | 2018-07-10 08:49 → 2018-07-06 08:49 (-4d) | 2018-08-10 14:49 → 2018-08-06 13:49 (-4d) | 23.62d → 21.5d |  |  |
| 22 | Developing site's structure | 2018-07-10 08:49 → 2018-07-06 08:49 (-4d) | 2018-07-11 08:49 → 2018-07-09 08:49 (-2d) |  |  |  |
| 23 | Complete site | 2018-07-20 10:49 → 2018-07-16 09:49 (-4d) | 2018-08-10 14:49 → 2018-08-06 13:49 (-4d) |  |  |  |
| 26 | Testing site | 2018-08-01 14:49 → 2018-07-26 13:49 (-6d) | 2018-08-30 09:49 → 2018-08-24 08:49 (-6d) |  |  |  |
| 29 | Creating Help system | 2018-07-31 11:49 → 2018-07-27 11:49 (-4d) | 2018-08-14 14:49 → 2018-08-10 14:49 (-4d) |  |  | 11.5d → 9.38d |
| 30 | **Creating User's guide** |  | 2018-07-31 11:49 → 2018-07-27 11:49 (-4d) | 17.38d → 15.38d |  |  |
| 31 | Writing User's Guide | 2018-07-10 08:49 → 2018-07-06 08:49 (-4d) | 2018-07-31 11:49 → 2018-07-27 11:49 (-4d) |  |  |  |
| 32 | Site commission - finish | 2018-08-30 09:49 → 2018-08-24 08:49 (-6d) | 2018-08-30 09:49 → 2018-08-24 08:49 (-6d) |  |  |  |
| 33 | **Project meetings** |  | 2018-08-29 10:00 → 2018-08-22 10:00 (-7d) | 117.12d → 112.12d | 33% → 35% | 0.98d → 1.85d |
